# <Project Name>

Schedule from MS Project, 2006-12-07 to 2007-11-28.
The Capital Group

## Calendars

- Standard: Mon-Fri 08:00-12:00, 13:00-17:00; Sat-Sun off.

## Resources

| Resource |
| --- |
| Project Manager |
| Analyst |
| Architect |
| Project Approver |
| Developer |
| Tester |
| Architecture Approver |
| Stakeholder |

## Schedule

| ID | WBS | Task | Type | Duration | Start | Finish | Predecessors | Total slack | Resources | Work |
| --- | --- | --- | --- | --- | --- | --- | --- | --- | --- | --- |
| 1 | 1 | **Inception** |  | 54d? | 2006-12-07 | 2007-02-20 |  | 0d |  | 917.6h |
| 2 | 1.1 | **Project Initiation** |  | 11d | 2006-12-07 | 2006-12-21 |  | 0d |  | 120h |
| 3 | 1.1.1 | Create Project Proposal |  | 5d | 2006-12-07 | 2006-12-13 |  | 0d | Project Manager [50%]; Analyst [50%] | 40h |
| 4 | 1.1.2 | Create Project Development Plan |  | 5d | 2006-12-07 | 2006-12-13 |  | 0d | Project Manager [50%]; Architect [50%] | 40h |
| 5 | 1.1.3 | Review Project Proposal and Development Plan |  | 5d | 2006-12-14 | 2006-12-20 | 4, 3 | 0d | Project Approver | 40h |
| 6 | 1.1.4 | Project Approval | milestone | 1d | 2006-12-21 | 2006-12-21 | 5 | 0d |  |  |
| 7 | 1.2 | **Iteration I1** |  | 20d | 2006-12-22 | 2007-01-18 | 2 | 0d |  | 364h |
| 8 | 1.2.1 | Plan Iteration |  | 1d | 2006-12-22 | 2006-12-22 |  | 0d | Project Manager [40%]; Architect [30%]; Analyst [30%] | 8h |
| 9 | 1.2.2 | **Iteration Tasks** |  | 17d | 2006-12-25 | 2007-01-16 | 8 | 0d |  | 340h |
| 10 | 1.2.2.1 | Collect Requirements |  | 17d | 2006-12-25 | 2007-01-16 |  | 0d | Analyst [50%] | 68h |
| 11 | 1.2.2.2 | Identify Use-Cases |  | 17d | 2006-12-25 | 2007-01-16 |  | 0d | Analyst [50%]; Architect [50%] | 136h |
| 12 | 1.2.2.3 | Setup Environment |  | 17d | 2006-12-25 | 2007-01-16 |  | 0d | Architect [25%]; Developer [50%]; Tester [25%] | 136h |
| 13 | 1.2.3 | Review Iteration |  | 2d | 2007-01-17 | 2007-01-18 | 9 | 0d | Project Manager [20%]; Architect [20%]; Analyst [20%]; Developer [20%]; Tester [20%] | 16h |
| 14 | 1.3 | **Iteration I2** |  | 20d | 2007-01-19 | 2007-02-15 | 7 | 0d |  | 401.6h |
| 15 | 1.3.1 | Plan Iteration |  | 1d | 2007-01-19 | 2007-01-19 |  | 0d | Project Manager [40%]; Architect [30%]; Analyst [30%] | 8h |
| 16 | 1.3.2 | **Iteration Tasks** |  | 17d | 2007-01-22 | 2007-02-13 | 15 | 0d |  | 377.6h |
| 17 | 1.3.2.1 | Analyze Use-Cases and Requirements |  | 17d | 2007-01-22 | 2007-02-13 |  | 0d | Analyst [50%]; Architect [25%]; Developer [15%]; Tester [10%] | 136h |
| 18 | 1.3.2.2 | Create Initial Iteration Plan |  | 12d | 2007-01-29 | 2007-02-13 | 17SS+5d | 0d | Project Manager [80%]; Architect [20%] | 57.6h |
| 19 | 1.3.2.3 | Identify Candidate Architecture |  | 12d | 2007-01-29 | 2007-02-13 | 17SS+5d | 0d | Architect [50%] | 48h |
| 20 | 1.3.2.4 | Setup Environment |  | 17d | 2007-01-22 | 2007-02-13 |  | 0d | Architect [5%]; Developer [50%]; Tester [45%] | 136h |
| 21 | 1.3.3 | Review Iteration |  | 2d | 2007-02-14 | 2007-02-15 | 16 | 0d | Project Manager [20%]; Architect [20%]; Analyst [20%]; Developer [20%]; Tester [20%] | 16h |
| 22 | 1.4 | Review Candidate Architecture |  | 2d | 2007-02-16 | 2007-02-19 | 14 | 0d | Architecture Approver | 16h |
| 23 | 1.5 | Review Iteration Plan |  | 2d | 2007-02-16 | 2007-02-19 | 14 | 0d | Stakeholder | 16h |
| 24 | 1.6 | Lifecyle Objectives Milestone (Candidate Architecture/Iteration Plan) | milestone | 1d? | 2007-02-20 | 2007-02-20 | 22, 23 | 0d |  |  |

| ID | WBS | Task | Type | Duration | Start | Finish | Predecessors | Total slack | Resources | Work |
| --- | --- | --- | --- | --- | --- | --- | --- | --- | --- | --- |
| 25 | 2 | **Elaboration** |  | 66d? | 2007-02-21 | 2007-05-23 | 1 | 0d |  | 1328h |
| 26 | 2.1 | **Iteration E1** |  | 20d | 2007-02-21 | 2007-03-20 |  | 0d |  | 432h |
| 27 | 2.1.1 | Plan Iteration |  | 1d | 2007-02-21 | 2007-02-21 |  | 0d | Project Manager [30%]; Architect [25%]; Analyst [15%]; Developer [15%]; Tester [15%] | 8h |
| 28 | 2.1.2 | **Iteration Tasks** |  | 17d | 2007-02-22 | 2007-03-16 | 27 | 0d |  | 408h |
| 29 | 2.1.2.1 | <Task> |  | 17d | 2007-02-22 | 2007-03-16 |  | 0d | Architect [35%]; Analyst [30%]; Developer [25%]; Tester [10%] | 136h |
| 30 | 2.1.2.2 | <Task> |  | 17d | 2007-02-22 | 2007-03-16 |  | 0d | Architect [35%]; Analyst [30%]; Developer [20%]; Tester [15%] | 136h |
| 31 | 2.1.2.3 | <Task> |  | 17d | 2007-02-22 | 2007-03-16 |  | 0d | Architect [35%]; Analyst [30%]; Developer [20%]; Tester [15%] | 136h |
| 32 | 2.1.3 | Review Iteration |  | 2d | 2007-03-19 | 2007-03-20 | 28 | 0d | Project Manager [20%]; Architect [20%]; Analyst [20%]; Developer [20%]; Tester [20%] | 16h |
| 33 | 2.2 | E1 Release | milestone | 1d? | 2007-03-21 | 2007-03-21 | 26 | 0d |  |  |
| 34 | 2.3 | **Iteration E2** |  | 20d | 2007-03-22 | 2007-04-18 | 33 | 0d |  | 432h |
| 35 | 2.3.1 | Plan Iteration |  | 1d | 2007-03-22 | 2007-03-22 |  | 0d | Project Manager [30%]; Architect [25%]; Analyst [15%]; Developer [15%]; Tester [15%] | 8h |
| 36 | 2.3.2 | **Iteration Tasks** |  | 17d | 2007-03-23 | 2007-04-16 | 35 | 0d |  | 408h |
| 37 | 2.3.2.1 | <Task> |  | 17d | 2007-03-23 | 2007-04-16 |  | 0d | Architect [35%]; Analyst [30%]; Developer [20%]; Tester [15%] | 136h |
| 38 | 2.3.2.2 | <Task> |  | 17d | 2007-03-23 | 2007-04-16 |  | 0d | Architect [35%]; Analyst [30%]; Developer [20%]; Tester [15%] | 136h |
| 39 | 2.3.2.3 | <Task> |  | 17d | 2007-03-23 | 2007-04-16 |  | 0d | Architect [35%]; Analyst [30%]; Developer [20%]; Tester [15%] | 136h |
| 40 | 2.3.3 | Review Iteration |  | 2d | 2007-04-17 | 2007-04-18 | 36 | 0d | Project Manager [20%]; Architect [20%]; Analyst [20%]; Developer [20%]; Tester [20%] | 16h |
| 41 | 2.4 | E2 Release | milestone | 1d? | 2007-04-19 | 2007-04-19 | 34 | 0d |  |  |
| 42 | 2.5 | **Iteration E3** |  | 20d | 2007-04-20 | 2007-05-17 | 41 | 0d |  | 432h |
| 43 | 2.5.1 | Plan Iteration |  | 1d | 2007-04-20 | 2007-04-20 |  | 0d | Project Manager [30%]; Architect [25%]; Analyst [15%]; Developer [15%]; Tester [15%] | 8h |
| 44 | 2.5.2 | **Iteration Tasks** |  | 17d | 2007-04-23 | 2007-05-15 | 43 | 0d |  | 408h |
| 45 | 2.5.2.1 | <Task> |  | 17d | 2007-04-23 | 2007-05-15 |  | 0d | Architect [25%]; Analyst [25%]; Developer [25%]; Tester [25%] | 136h |
| 46 | 2.5.2.2 | <Task> |  | 17d | 2007-04-23 | 2007-05-15 |  | 0d | Architect [25%]; Analyst [25%]; Developer [25%]; Tester [25%] | 136h |
| 47 | 2.5.2.3 | <Task> |  | 17d | 2007-04-23 | 2007-05-15 |  | 0d | Architect [25%]; Analyst [25%]; Developer [25%]; Tester [25%] | 136h |
| 48 | 2.5.3 | Review Iteration |  | 2d | 2007-05-16 | 2007-05-17 | 44 | 0d | Project Manager [20%]; Architect [20%]; Analyst [20%]; Developer [20%]; Tester [20%] | 16h |
| 49 | 2.6 | E3 Release | milestone | 1d? | 2007-05-18 | 2007-05-18 | 42 | 0d |  |  |
| 50 | 2.7 | Review Baseline Architecture |  | 2d | 2007-05-21 | 2007-05-22 | 49 | 0d | Architecture Approver | 16h |
| 51 | 2.8 | Demonstrate and Review Baseline System |  | 2d | 2007-05-21 | 2007-05-22 | 49 | 0d | Tester [50%]; Stakeholder [50%] | 16h |
| 52 | 2.9 | Lifecycle Architecture Milestone (Baseline Architecture/Alpha Release) | milestone | 1d? | 2007-05-23 | 2007-05-23 | 50, 51 | 0d |  |  |

| ID | WBS | Task | Type | Duration | Start | Finish | Predecessors | Total slack | Resources | Work |
| --- | --- | --- | --- | --- | --- | --- | --- | --- | --- | --- |
| 53 | 3 | **Construction** |  | 87d? | 2007-05-24 | 2007-09-21 | 25 | 0d |  | 1760h |
| 54 | 3.1 | **Iteration C1** |  | 20d | 2007-05-24 | 2007-06-20 |  | 0d |  | 432h |
| 55 | 3.1.1 | Plan Iteration |  | 1d | 2007-05-24 | 2007-05-24 |  | 0d | Project Manager [30%]; Architect [15%]; Analyst [15%]; Developer [25%]; Tester [15%] | 8h |
| 56 | 3.1.2 | **Iteration Tasks** |  | 17d | 2007-05-25 | 2007-06-18 | 55 | 0d |  | 408h |
| 57 | 3.1.2.1 | <Task> |  | 17d | 2007-05-25 | 2007-06-18 |  | 0d | Architect [15%]; Analyst [15%]; Developer [35%]; Tester [35%] | 136h |
| 58 | 3.1.2.2 | <Task> |  | 17d | 2007-05-25 | 2007-06-18 |  | 0d | Architect [15%]; Analyst [15%]; Developer [35%]; Tester [35%] | 136h |
| 59 | 3.1.2.3 | <Task> |  | 17d | 2007-05-25 | 2007-06-18 |  | 0d | Architect [15%]; Analyst [15%]; Developer [35%]; Tester [35%] | 136h |
| 60 | 3.1.3 | Review Iteration |  | 2d | 2007-06-19 | 2007-06-20 | 56 | 0d | Project Manager [20%]; Architect [20%]; Analyst [20%]; Developer [20%]; Tester [20%] | 16h |
| 61 | 3.2 | C1 Release | milestone | 1d? | 2007-06-21 | 2007-06-21 | 54 | 0d |  |  |
| 62 | 3.3 | **Iteration C2** |  | 20d | 2007-06-22 | 2007-07-19 | 61 | 0d |  | 432h |
| 63 | 3.3.1 | Plan Iteration |  | 1d | 2007-06-22 | 2007-06-22 |  | 0d | Project Manager [30%]; Architect [15%]; Analyst [15%]; Developer [25%]; Tester [15%] | 8h |
| 64 | 3.3.2 | **Iteration Tasks** |  | 17d | 2007-06-25 | 2007-07-17 | 63 | 0d |  | 408h |
| 65 | 3.3.2.1 | <Task> |  | 17d | 2007-06-25 | 2007-07-17 |  | 0d | Architect [15%]; Analyst [15%]; Developer [35%]; Tester [35%] | 136h |
| 66 | 3.3.2.2 | <Task> |  | 17d | 2007-06-25 | 2007-07-17 |  | 0d | Architect [15%]; Analyst [15%]; Developer [35%]; Tester [35%] | 136h |
| 67 | 3.3.2.3 | <Task> |  | 17d | 2007-06-25 | 2007-07-17 |  | 0d | Architect [15%]; Analyst [15%]; Developer [35%]; Tester [35%] | 136h |
| 68 | 3.3.3 | Review Iteration |  | 2d | 2007-07-18 | 2007-07-19 | 64 | 0d | Project Manager [20%]; Architect [20%]; Analyst [20%]; Developer [20%]; Tester [20%] | 16h |
| 69 | 3.4 | C2 Release | milestone | 1d? | 2007-07-20 | 2007-07-20 | 62 | 0d |  |  |
| 70 | 3.5 | **Iteration C3** |  | 20d | 2007-07-23 | 2007-08-17 | 69 | 0d |  | 432h |
| 71 | 3.5.1 | Plan Iteration |  | 1d | 2007-07-23 | 2007-07-23 |  | 0d | Project Manager [30%]; Architect [10%]; Analyst [10%]; Developer [25%]; Tester [25%] | 8h |
| 72 | 3.5.2 | **Iteration Tasks** |  | 17d | 2007-07-24 | 2007-08-15 | 71 | 0d |  | 408h |
| 73 | 3.5.2.1 | <Task> |  | 17d | 2007-07-24 | 2007-08-15 |  | 0d | Architect [15%]; Analyst [15%]; Developer [35%]; Tester [35%] | 136h |
| 74 | 3.5.2.2 | <Task> |  | 17d | 2007-07-24 | 2007-08-15 |  | 0d | Architect [15%]; Analyst [15%]; Developer [35%]; Tester [35%] | 136h |
| 75 | 3.5.2.3 | <Task> |  | 17d | 2007-07-24 | 2007-08-15 |  | 0d | Architect [15%]; Analyst [15%]; Developer [35%]; Tester [35%] | 136h |
| 76 | 3.5.3 | Review Iteration |  | 2d | 2007-08-16 | 2007-08-17 | 72 | 0d | Project Manager [20%]; Architect [20%]; Analyst [20%]; Developer [20%]; Tester [20%] | 16h |
| 77 | 3.6 | C3 Release | milestone | 1d? | 2007-08-20 | 2007-08-20 | 70 | 0d |  |  |

| ID | WBS | Task | Type | Duration | Start | Finish | Predecessors | Total slack | Resources | Work |
| --- | --- | --- | --- | --- | --- | --- | --- | --- | --- | --- |
| 78 | 3.7 | **Iteration C4** |  | 20d | 2007-08-21 | 2007-09-17 | 77 | 0d |  | 432h |
| 79 | 3.7.1 | Plan Iteration |  | 1d | 2007-08-21 | 2007-08-21 |  | 0d | Project Manager [30%]; Architect [10%]; Analyst [10%]; Developer [25%]; Tester [25%] | 8h |
| 80 | 3.7.2 | **Iteration Tasks** |  | 17d | 2007-08-22 | 2007-09-13 | 79 | 0d |  | 408h |
| 81 | 3.7.2.1 | <Task> |  | 17d | 2007-08-22 | 2007-09-13 |  | 0d | Architect [10%]; Analyst [10%]; Developer [40%]; Tester [40%] | 136h |
| 82 | 3.7.2.2 | <Task> |  | 17d | 2007-08-22 | 2007-09-13 |  | 0d | Architect [10%]; Analyst [10%]; Developer [40%]; Tester [40%] | 136h |
| 83 | 3.7.2.3 | <Task> |  | 17d | 2007-08-22 | 2007-09-13 |  | 0d | Architect [10%]; Analyst [10%]; Developer [40%]; Tester [40%] | 136h |
| 84 | 3.7.3 | Review Iteration |  | 2d | 2007-09-14 | 2007-09-17 | 80 | 0d | Project Manager [20%]; Architect [20%]; Analyst [20%]; Developer [20%]; Tester [20%] | 16h |
| 85 | 3.8 | C4 Release | milestone | 1d? | 2007-09-18 | 2007-09-18 | 78 | 0d |  |  |
| 86 | 3.9 | Review Final Architecture |  | 2d | 2007-09-19 | 2007-09-20 | 85 | 0d | Architecture Approver | 16h |
| 87 | 3.10 | Demonstrate and Review Final System |  | 2d | 2007-09-19 | 2007-09-20 | 85 | 0d | Tester [50%]; Stakeholder [50%] | 16h |
| 88 | 3.11 | Initial Operating Capcity Milestone (Final Architecture/Beta Release) | milestone | 1d? | 2007-09-21 | 2007-09-21 | 86, 87 | 0d |  |  |
| 89 | 4 | **Transition** |  | 48d? | 2007-09-24 | 2007-11-28 | 53 | 0d |  | 632h |
| 90 | 4.1 | **Iteration T1** |  | 20d | 2007-09-24 | 2007-10-19 |  | 0d |  | 296h |
| 91 | 4.1.1 | Plan Iteration |  | 1d | 2007-09-24 | 2007-09-24 |  | 0d | Project Manager [40%]; Analyst [10%]; Developer [25%]; Tester [25%] | 8h |
| 92 | 4.1.2 | **Iteration Tasks** |  | 17d | 2007-09-25 | 2007-10-17 | 91 | 0d |  | 272h |
| 93 | 4.1.2.1 | <Task> |  | 17d | 2007-09-25 | 2007-10-17 |  | 0d | Analyst [5%]; Developer [45%]; Tester [50%] | 136h |
| 94 | 4.1.2.2 | <Task> |  | 17d | 2007-09-25 | 2007-10-17 |  | 0d | Analyst [5%]; Developer [45%]; Tester [50%] | 136h |
| 95 | 4.1.3 | Review Iteration |  | 2d | 2007-10-18 | 2007-10-19 | 92 | 0d | Project Manager [25%]; Analyst [25%]; Developer [25%]; Tester [25%] | 16h |
| 96 | 4.2 | T1 Release | milestone | 1d? | 2007-10-22 | 2007-10-22 | 90 | 0d |  |  |
| 97 | 4.3 | **Iteration T2** |  | 20d | 2007-10-23 | 2007-11-19 | 96 | 0d |  | 296h |
| 98 | 4.3.1 | Plan Iteration |  | 1d | 2007-10-23 | 2007-10-23 |  | 0d | Project Manager [40%]; Analyst [10%]; Developer [25%]; Tester [25%] | 8h |
| 99 | 4.3.2 | **Iteration Tasks** |  | 17d | 2007-10-24 | 2007-11-15 | 98 | 0d |  | 272h |
| 100 | 4.3.2.1 | <Task> |  | 17d | 2007-10-24 | 2007-11-15 |  | 0d | Analyst [5%]; Developer [45%]; Tester [50%] | 136h |
| 101 | 4.3.2.2 | <Task> |  | 17d | 2007-10-24 | 2007-11-15 |  | 0d | Analyst [5%]; Developer [45%]; Tester [50%] | 136h |
| 102 | 4.3.3 | Review Iteration |  | 2d | 2007-11-16 | 2007-11-19 | 99 | 0d | Project Manager [25%]; Analyst [25%]; Developer [25%]; Tester [25%] | 16h |
| 103 | 4.4 | T2 Release | milestone | 1d? | 2007-11-20 | 2007-11-20 | 97 | 0d |  |  |
| 104 | 4.5 | Demonstrate and Review Production System |  | 5d | 2007-11-21 | 2007-11-27 | 103 | 0d | Tester [50%]; Stakeholder [50%] | 40h |
| 105 | 4.6 | Production Release | milestone | 1d? | 2007-11-28 | 2007-11-28 | 104 | 0d |  |  |
